# EDT-SIGFoner

How a schedule from MS Project changed from version to version. A marks actual dates.

## Version 1 (saved 2010-05-23, file Cronograma Fidelizacion_CU_V04.mpp)

| ID | WBS | Task | Duration | Start | Finish | Predecessors | Complete | Total float | Constraint |
| --- | --- | --- | --- | --- | --- | --- | --- | --- | --- |
| 1 | 1 | **Sistema de Fidelización** | 19d? | 2010-05-08 A | 2010-05-27 |  | 66% | 0d |  |
| 2 | 1.1 | **Requerimientos** | 9.75d | 2010-05-10 A | 2010-05-19 A |  | 100% |  |  |
| 3 | 1.1.1 | **Caso de Uso: Mantener Cliente** | 9d | 2010-05-10 A | 2010-05-19 A |  | 100% |  |  |
| 4 |  | Agregar Reglas del Negocio | 3d | 2010-05-10 A | 2010-05-12 A |  | 100% |  | start no earlier than 2010-05-10 |
| 5 |  | Control de ECUS Mantener Cliente | 0.5d | 2010-05-17 A | 2010-05-17 A | 4 | 100% |  | start no earlier than 2010-05-17 |
| 6 |  | Aprobar especificación | 0d | 2010-05-19 A | 2010-05-19 A | 5 | 100% |  | start no earlier than 2010-05-19 |
| 7 | 1.1.2 | **Caso de Uso: Administrar Cuenta** | 2.75d | 2010-05-17 A | 2010-05-19 A |  | 100% |  |  |
| 8 |  | Agregar Reglas del Negocio | 1.75d | 2010-05-17 A | 2010-05-18 A |  | 100% |  | finish no earlier than 2010-05-18 |
| 9 |  | Control de ECUS Administrar Cuenta | 0.5d | 2010-05-18 A | 2010-05-19 A | 8 | 100% |  | finish no earlier than 2010-05-18 |
| 10 |  | Aprobar especificación | 0d | 2010-05-19 A | 2010-05-19 A | 9 | 100% |  | finish no earlier than 2010-05-19 |
| 11 | 1.1.3 | **Caso de Uso: Mantener Producto** | 2.75d | 2010-05-17 A | 2010-05-19 A |  | 100% |  |  |
| 12 |  | Agregar Reglas del Negocio | 1.75d | 2010-05-17 A | 2010-05-18 A |  | 100% |  | finish no earlier than 2010-05-18 |
| 13 |  | Control de ECUS Mantener Producto | 0.5d | 2010-05-18 A | 2010-05-19 A | 12 | 100% |  |  |
| 14 |  | Aprobar especificación | 0d | 2010-05-19 A | 2010-05-19 A | 13 | 100% |  | finish no earlier than 2010-05-19 |
| 15 | 1.1.4 | **Caso de Uso: Registrar Canje** | 3.25d | 2010-05-10 A | 2010-05-13 A |  | 100% |  |  |
| 16 |  | Agregar Reglas del Negocio | 2.75d | 2010-05-10 A | 2010-05-12 A |  | 100% |  | start no earlier than 2010-05-10 |
| 17 |  | Control de ECUS Registrar Canje | 0.5d | 2010-05-12 A | 2010-05-13 A | 16 | 100% |  | finish no earlier than 2010-05-12 |
| 18 |  | Aprobar especificación | 0d | 2010-05-13 A | 2010-05-13 A | 17 | 100% |  | start no earlier than 2010-05-13 |
| 19 | 1.1.5 | **Caso de Uso: Asignar Puntos x Producto** | 1.5d | 2010-05-12 A | 2010-05-13 A |  | 100% |  |  |
| 20 |  | Agregar Reglas del Negocio | 1d | 2010-05-12 A | 2010-05-12 A |  | 100% |  | start no earlier than 2010-05-17 |
| 21 |  | Control de ECUS Asignar Puntos x Producto | 0.5d | 2010-05-12 A | 2010-05-13 A | 20 | 100% |  | start no earlier than 2010-05-12 |
| 22 |  | Aprobar especificación | 0d | 2010-05-13 A | 2010-05-13 A | 21 | 100% |  | finish no earlier than 2010-05-19 |
| 23 | 1.1.6 | **Caso de Uso: Consultar Puntos x Producto** | 2d | 2010-05-17 A | 2010-05-19 A |  | 100% |  |  |
| 24 |  | Agregar Reglas del Negocio | 1d | 2010-05-17 A | 2010-05-17 A |  | 100% |  | start no earlier than 2010-05-10 |
| 25 |  | Control de ECUS Consultar Puntos x Producto | 0.5d | 2010-05-18 A | 2010-05-18 A | 24 | 100% |  |  |
| 26 |  | Aprobar especificación | 0d | 2010-05-19 A | 2010-05-19 A | 25 | 100% |  | start no earlier than 2010-05-13 |
| 27 | 1.1.7 | **Caso de Uso: Generar Orden de Pedido** | 3.5d | 2010-05-10 A | 2010-05-13 A |  | 100% |  |  |
| 28 |  | Agregar Reglas del Negocio | 3d | 2010-05-10 A | 2010-05-12 A |  | 100% |  | start no earlier than 2010-05-10 |
| 29 |  | Control de ECUS Generar Orden de Pedido | 0.5d | 2010-05-12 A | 2010-05-13 A | 28 | 100% |  |  |
| 30 |  | Aprobar especificación | 0d | 2010-05-13 A | 2010-05-13 A | 29 | 100% |  | start no earlier than 2010-05-13 |
| 31 | 1.1.8 | **Caso de Uso: Actualizar Stock de Productos** | 2.25d | 2010-05-17 A | 2010-05-19 A |  | 100% |  |  |
| 32 |  | Agregar Reglas del Negocio | 1.75d | 2010-05-17 A | 2010-05-18 A |  | 100% |  | finish no earlier than 2010-05-18 |
| 33 |  | Control de ECUS Actualizar Stock de Productos | 0.5d | 2010-05-18 A | 2010-05-19 A | 32 | 100% |  |  |
| 34 |  | Aprobar especificación | 0d | 2010-05-19 A | 2010-05-19 A | 33 | 100% |  | finish no earlier than 2010-05-19 |
| 35 | 1.1.9 | **Caso de Uso: Generar Reporte de Clientes Fidelizados** | 3.5d | 2010-05-10 A | 2010-05-13 A |  | 100% |  |  |
| 36 |  | Agregar Reglas del Negocio | 3d | 2010-05-10 A | 2010-05-12 A |  | 100% |  | start no earlier than 2010-05-10 |
| 37 |  | Control de ECUS Generar Reporte de Clientes Fidelizados | 0.5d | 2010-05-13 A | 2010-05-13 A | 36 | 100% |  |  |
| 38 |  | Aprobar especificación | 0d | 2010-05-13 A | 2010-05-13 A | 37 | 100% |  | start no earlier than 2010-05-13 |
| 39 | 1.1.10 | **Caso de Uso: Generar Reporte Reposición de Canje** | 2.25d | 2010-05-17 A | 2010-05-19 A |  | 100% |  |  |
| 40 |  | Agregar Reglas del Negocio | 1.75d | 2010-05-17 A | 2010-05-18 A |  | 100% |  | finish no earlier than 2010-05-18 |
| 41 |  | Control de ECUS Generar Reporte Reposición de Canje | 0.5d | 2010-05-18 A | 2010-05-19 A | 40 | 100% |  |  |
| 42 |  | Aprobar especificación | 0d | 2010-05-19 A | 2010-05-19 A | 41 | 100% |  | finish no earlier than 2010-05-19 |
| 43 | 1.2 | **Arquitectura de Software** | 4.75d? | 2010-05-18 | 2010-05-22 |  |  | 5.25d |  |
| 44 | 1.2.1 | **Definir metas y restricciones** | 1d | 2010-05-20 | 2010-05-20 |  |  | 7d |  |
| 45 |  | Listado de requerimientos no funcionales | 1d | 2010-05-20 | 2010-05-20 |  |  | 7d | start no earlier than 2010-05-20 |
| 46 | 1.2.2 | **Elaborar vistas de casos de uso** | 4.75d? | 2010-05-18 | 2010-05-22 |  |  | 5.25d |  |
| 47 |  | Actualización del diagrama de actores | 1.75d? | 2010-05-18 | 2010-05-19 |  |  | 8.25d | start no earlier than 2010-05-18 |
| 48 |  | Actualización del diagrama de casos de uso | 1.75d? | 2010-05-21 | 2010-05-22 |  |  | 5.25d | start no earlier than 2010-05-21 |
| 49 | 1.2.3 | **Elaborar vistas de datos** | 2d? | 2010-05-19 | 2010-05-20 |  |  | 7d |  |
| 50 |  | Actualizar modelo conceptual | 1.75d? | 2010-05-19 | 2010-05-20 |  |  | 7.25d | start no earlier than 2010-05-19 |
| 51 |  | Generar modelo físico | 1d? | 2010-05-20 | 2010-05-20 |  |  | 7d | start no earlier than 2010-05-20 |
| 52 | 1.2.4 | **Mecanismos** | 1.75d? | 2010-05-18 | 2010-05-19 |  |  | 8.25d |  |
| 53 |  | Realizar inventario de mecanismos | 1.75d? | 2010-05-18 | 2010-05-19 |  |  | 8.25d | finish no earlier than 2010-05-19 |
| 54 | 1.3 | **Administración del Proyecto** | 13d? | 2010-05-10 A | 2010-05-22 |  | 41% | 5d |  |
| 55 | 1.3.1 | **Planificación** | 13d? | 2010-05-10 A | 2010-05-22 |  | 67% | 5d |  |
| 56 |  | Elaborar cronograma de ejecución WBS con avances de tareas | 2d | 2010-05-10 A | 2010-05-11 A |  | 100% |  | start no earlier than 2010-05-10 |
| 57 |  | Actualizar COCOMO | 1d? | 2010-05-22 | 2010-05-22 |  |  | 5d | start no earlier than 2010-05-22 |
| 58 | 1.3.2 | **Gestión de Calidad** | 4.75d? | 2010-05-18 A | 2010-05-22 |  | 28% | 5.25d |  |
| 59 |  | Lista de comprobación | 1d? | 2010-05-18 | 2010-05-18 |  |  | 9d | start no earlier than 2010-05-18 |
| 60 |  | Documento estándar de código | 1.75d? | 2010-05-18 A | 2010-05-19 A |  | 100% |  | finish no earlier than 2010-05-19 |
| 61 |  | Documento estándar de interfaz | 1.75d? | 2010-05-19 | 2010-05-20 |  |  | 7.25d | finish no earlier than 2010-05-20 |
| 62 |  | Documento estándar de nomenclatura | 1.75d? | 2010-05-21 | 2010-05-22 |  |  | 5.25d | finish no earlier than 2010-05-22 |
| 63 | 1.4 | **Pruebas de Concepto de la Arquitectura** | 1.75d? | 2010-05-22 | 2010-05-23 |  |  | 4.25d |  |
| 64 |  | Programación de un CUS transaccional | 1.75d | 2010-05-22 | 2010-05-23 |  |  | 4.25d | finish no earlier than 2010-05-23 |
| 65 |  | Validación del desarrollo del CUS transaccional | 0d? | 2010-05-23 | 2010-05-23 | 64 |  | 4.25d | finish no earlier than 2010-05-23 |
| 66 |  | Programación de un CUS reporte | 1.75d? | 2010-05-22 | 2010-05-23 |  |  | 4.25d | finish no earlier than 2010-05-23 |
| 67 |  | Validación del desarrollo del CUS reporte | 0d? | 2010-05-23 | 2010-05-23 | 66 |  | 4.25d | finish no earlier than 2010-05-23 |
| 68 | 1.5 | **Gestión del Proyecto** | 19d | 2010-05-08 A | 2010-05-27 A |  | 100% |  |  |
| 69 | 1.5.1 | **Reunión de seguimiento y desglose de trabajo** | 15d | 2010-05-08 A | 2010-05-23 A |  | 100% |  |  |
| 70 |  | Reunión de seguimiento y desglose de trabajo 1 | 1d | 2010-05-08 A | 2010-05-08 A |  | 100% |  | start no earlier than 2010-05-08 |

| ID | WBS | Task | Duration | Start | Finish | Complete | Constraint |
| --- | --- | --- | --- | --- | --- | --- | --- |
| 71 |  | Reunión de seguimiento y desglose de trabajo 2 | 1d | 2010-05-16 A | 2010-05-16 A | 100% | start no earlier than 2010-05-16 |
| 72 |  | Reunión de seguimiento y desglose de trabajo 3 | 1d | 2010-05-23 A | 2010-05-23 A | 100% | start no earlier than 2010-05-23 |
| 73 | 1.5.2 | **Entrega de Informe de Avances** | 15d | 2010-05-13 A | 2010-05-27 A | 100% |  |
| 74 |  | Entrega de Informe de Avances 1 | 1d | 2010-05-13 A | 2010-05-13 A | 100% | start no earlier than 2010-05-13 |
| 75 |  | Entrega de Informe de Avances 2 | 1d | 2010-05-20 A | 2010-05-20 A | 100% | start no earlier than 2010-05-20 |
| 76 |  | Entrega de Informe de Avances 3 | 1d | 2010-05-27 A | 2010-05-27 A | 100% | start no earlier than 2010-05-27 |

## Version 2 (saved 2010-06-03, file Cronograma Fidelizacion_CU_V05.mpp)

Last finish 2010-05-27 → 2010-08-05 (+70d). Complete tasks 38 → 53.

Added:

| ID | Task | Duration | Start | Finish | Constraint | Resources |
| --- | --- | --- | --- | --- | --- | --- |
| 7 | Descripción de requisitos de información | 2d? | 2010-06-03 | 2010-06-05 | finish no earlier than 2010-06-05 | Hebert Borjas |
| 8 | Registro de información adicional | 0d? | 2010-06-05 | 2010-06-05 | finish no earlier than 2010-06-05 | Hebert Borjas |
| 9 | Control de la descripción de requisitos de información | 0d? | 2010-06-06 | 2010-06-06 | finish no earlier than 2010-06-06 | Hebert Borjas |
| 14 | Descripción de requisitos de información | 1.75d? | 2010-06-04 | 2010-06-05 | finish no earlier than 2010-06-05 | Hebert Borjas |
| 15 | Registro de información adicional | 0d? | 2010-06-05 | 2010-06-05 | start no earlier than 2010-06-05 | Hebert Borjas |
| 16 | Control de la descripción de requisitos de información | 0d? | 2010-06-06 | 2010-06-06 | finish no earlier than 2010-06-06 | Hebert Borjas |
| 21 | Descripción de requisitos de información | 1.75d? | 2010-06-04 | 2010-06-05 | finish no earlier than 2010-06-05 | Erika Rojas |
| 22 | Registro de información adicional | 0d? | 2010-06-05 | 2010-06-05 | start no earlier than 2010-06-05 | Erika Rojas |
| 23 | Control de la descripción de requisitos de información | 0d? | 2010-06-06 | 2010-06-06 | finish no earlier than 2010-06-06 | Hebert Borjas |
| 28 | Descripción de requisitos de información | 1.75d? | 2010-06-04 | 2010-06-05 | finish no earlier than 2010-06-05 | Erika Rojas |
| 29 | Registro de información adicional | 0d? | 2010-06-05 | 2010-06-05 | start no earlier than 2010-06-05 | Erika Rojas |
| 30 | Control de la descripción de requisitos de información | 0d? | 2010-06-06 | 2010-06-06 | finish no earlier than 2010-06-06 | Hebert Borjas |
| 35 | Descripción de requisitos de información | 1.75d? | 2010-06-04 | 2010-06-05 | finish no earlier than 2010-06-05 | Franco Castro |
| 36 | Registro de información adicional | 0d? | 2010-06-05 | 2010-06-05 | start no earlier than 2010-06-05 | Franco Castro |
| 37 | Control de la descripción de requisitos de información | 0d? | 2010-06-06 | 2010-06-06 | finish no earlier than 2010-06-06 | Hebert Borjas |
| 42 | Descripción de requisitos de información | 1.75d? | 2010-06-04 | 2010-06-05 | finish no earlier than 2010-06-05 | Franco Castro |
| 43 | Registro de información adicional | 0d? | 2010-06-05 | 2010-06-05 | start no earlier than 2010-06-05 | Franco Castro |
| 44 | Control de la descripción de requisitos de información | 0d? | 2010-06-06 | 2010-06-06 | finish no earlier than 2010-06-06 | Hebert Borjas |
| 49 | Descripción de requisitos de información | 1.75d? | 2010-06-04 | 2010-06-05 | finish no earlier than 2010-06-05 | Gonzalo Azabache |
| 50 | Registro de información adicional | 0d? | 2010-06-05 | 2010-06-05 | start no earlier than 2010-06-05 | Gonzalo Azabache |
| 51 | Control de la descripción de requisitos de información | 0d? | 2010-06-06 | 2010-06-06 | finish no earlier than 2010-06-06 | Hebert Borjas |
| 56 | Descripción de requisitos de información | 1.75d? | 2010-06-04 | 2010-06-05 | finish no earlier than 2010-06-05 | Gonzalo Azabache |
| 57 | Registro de información adicional | 0d? | 2010-06-05 | 2010-06-05 | start no earlier than 2010-06-05 | Gonzalo Azabache |
| 58 | Control de la descripción de requisitos de información | 0d? | 2010-06-06 | 2010-06-06 | finish no earlier than 2010-06-06 | Hebert Borjas |
| 63 | Descripción de requisitos de información | 1.75d? | 2010-06-04 | 2010-06-05 | finish no earlier than 2010-06-05 | Edmundo Esteban |
| 64 | Registro de información adicional | 0d? | 2010-06-05 | 2010-06-05 | start no earlier than 2010-06-05 | Edmundo Esteban |
| 65 | Control de la descripción de requisitos de información | 0d? | 2010-06-06 | 2010-06-06 | finish no earlier than 2010-06-06 | Hebert Borjas |
| 70 | Descripción de requisitos de información | 1.75d? | 2010-06-04 | 2010-06-05 | finish no earlier than 2010-06-05 | Edmundo Esteban |
| 71 | Registro de información adicional | 0d? | 2010-06-05 | 2010-06-05 | start no earlier than 2010-06-05 | Edmundo Esteban |
| 72 | Control de la descripción de requisitos de información | 0d? | 2010-06-06 | 2010-06-06 | finish no earlier than 2010-06-06 | Hebert Borjas |
| 73 | **Realización de Casos de Uso** | 1d? | 2010-06-07 | 2010-06-07 |  |  |
| 74 | RCUS - Mantener Cliente | 1d? | 2010-06-07 | 2010-06-07 | start no earlier than 2010-06-07 | Hebert Borjas |
| 75 | RCUS - Administrar Cuenta | 1d? | 2010-06-07 | 2010-06-07 | start no earlier than 2010-06-07 | Hebert Borjas |
| 76 | RCUS - Mantener Producto | 1d? | 2010-06-07 | 2010-06-07 | start no earlier than 2010-06-07 | Erika Rojas |
| 77 | RCUS - Registrar Canje | 1d? | 2010-06-07 | 2010-06-07 | start no earlier than 2010-06-07 | Erika Rojas |
| 78 | RCUS - Asignar Puntos x Producto | 1d? | 2010-06-07 | 2010-06-07 | start no earlier than 2010-06-07 | Franco Castro |
| 79 | RCUS - Consultar Puntos x Producto | 1d? | 2010-06-07 | 2010-06-07 | start no earlier than 2010-06-07 | Franco Castro |
| 80 | RCUS - Generar Orden de Pedido | 1d? | 2010-06-07 | 2010-06-07 | start no earlier than 2010-06-07 | Gonzalo Azabache |
| 81 | RCUS - Actualizar Stock de Productos | 1d? | 2010-06-07 | 2010-06-07 | start no earlier than 2010-06-07 | Gonzalo Azabache |
| 82 | RCUS - Generar Reporte de Clientes Fidelizados | 1d? | 2010-06-07 | 2010-06-07 | start no earlier than 2010-06-07 | Edmundo Esteban |
| 83 | RCUS - Generar Reporte Reposición de Canje | 1d? | 2010-06-07 | 2010-06-07 | start no earlier than 2010-06-07 | Edmundo Esteban |
| 93 | Diccionario de Datos | 9d? | 2010-06-03 | 2010-06-12 | finish no earlier than 2010-06-12 | Erika Rojas |
| 96 | Descripción de la solución de mecanismos | 1d? | 2010-06-07 | 2010-06-07 | start no earlier than 2010-06-07 | Edmundo Esteban |
| 97 | **Vista General** | 7.75d? | 2010-06-03 | 2010-06-10 |  |  |
| 98 | Descripción del patrón de arquitectura | 7.75d? | 2010-06-03 | 2010-06-10 | finish no earlier than 2010-06-10 | Hebert Borjas |
| 99 | **Vista de implementación** | 9.75d? | 2010-06-03 | 2010-06-12 |  |  |
| 100 | Diagrama de componentes | 9.75d? | 2010-06-03 | 2010-06-12 | finish no earlier than 2010-06-12 | Gonzalo Azabache |
| 101 | **Vista de despliegue** | 9.75d? | 2010-06-03 | 2010-06-12 |  |  |
| 102 | Diagrama de despliegue | 9.75d? | 2010-06-03 | 2010-06-12 | finish no earlier than 2010-06-12 | Franco Castro |
| 103 | **Paquetes de diseño** | 1d? | 2010-06-07 | 2010-06-07 |  |  |
| 104 | Diagrama del paquete de diseño | 1d? | 2010-06-07 | 2010-06-07 | start no earlier than 2010-06-07 | Erika Rojas |
| 119 | **Sistema** | 10d | 2010-06-02 | 2010-06-12 |  |  |
| 120 | Programación del escenario principal | 10d | 2010-06-02 | 2010-06-12 | finish no earlier than 2010-06-12 | Gonzalo Azabache |
| 126 | Reunión de seguimiento y desglose de trabajo 4 | 1d | 2010-05-30 A | 2010-05-30 A | start no earlier than 2010-05-30 | Erika Rojas; Hebert Borjas; Gonzalo Azabache; Franco Castro; Edmundo Esteban |
| 127 | Reunión de seguimiento y desglose de trabajo 5 | 1d | 2010-06-06 | 2010-06-06 | start no earlier than 2010-06-06 | Erika Rojas; Hebert Borjas; Gonzalo Azabache; Franco Castro; Edmundo Esteban |
| 128 | Reunión de seguimiento y desglose de trabajo 6 | 1d | 2010-06-13 | 2010-06-13 | start no earlier than 2010-06-13 | Erika Rojas; Hebert Borjas; Gonzalo Azabache; Franco Castro; Edmundo Esteban |
| 129 | Reunión de seguimiento y desglose de trabajo 7 | 1d | 2010-06-19 | 2010-06-19 | start no earlier than 2010-06-19 | Erika Rojas; Hebert Borjas; Gonzalo Azabache; Franco Castro; Edmundo Esteban |
| 130 | Reunión de seguimiento y desglose de trabajo 8 | 1d | 2010-06-27 | 2010-06-27 | start no earlier than 2010-06-27 | Erika Rojas; Hebert Borjas; Gonzalo Azabache; Franco Castro; Edmundo Esteban |
| 131 | Reunión de seguimiento y desglose de trabajo 9 | 1d | 2010-07-04 | 2010-07-04 | start no earlier than 2010-07-04 | Erika Rojas; Hebert Borjas; Gonzalo Azabache; Franco Castro; Edmundo Esteban |
| 132 | Reunión de seguimiento y desglose de trabajo 10 | 1d | 2010-07-11 | 2010-07-11 | start no earlier than 2010-07-11 | Erika Rojas; Hebert Borjas; Gonzalo Azabache; Franco Castro; Edmundo Esteban |
| 133 | Reunión de seguimiento y desglose de trabajo 11 | 1d | 2010-07-18 | 2010-07-18 | start no earlier than 2010-07-18 | Erika Rojas; Hebert Borjas; Gonzalo Azabache; Franco Castro; Edmundo Esteban |
| 134 | Reunión de seguimiento y desglose de trabajo 12 | 1d | 2010-07-25 | 2010-07-25 | start no earlier than 2010-07-25 | Erika Rojas; Hebert Borjas; Gonzalo Azabache; Franco Castro; Edmundo Esteban |
| 135 | Reunión de seguimiento y desglose de trabajo 13 | 1d | 2010-08-01 | 2010-08-01 | start no earlier than 2010-08-01 |  |
| 140 | Entrega de Informe de Avances 4 | 1d | 2010-06-03 | 2010-06-03 | start no earlier than 2010-06-03 | Erika Rojas |
| 141 | Entrega de Informe de Avances 5 | 1d | 2010-06-10 | 2010-06-10 | start no earlier than 2010-06-10 | Erika Rojas |
| 142 | Entrega de Informe de Avances 6 | 1d | 2010-06-17 | 2010-06-17 | start no earlier than 2010-06-17 | Erika Rojas |
| 143 | Entrega de Informe de Avances 7 | 1d | 2010-06-24 | 2010-06-24 | start no earlier than 2010-06-24 | Erika Rojas |
| 144 | Entrega de Informe de Avances 8 | 1d | 2010-07-01 | 2010-07-01 | start no earlier than 2010-07-01 | Erika Rojas |
| 145 | Entrega de Informe de Avances 9 | 1d | 2010-07-08 | 2010-07-08 | start no earlier than 2010-07-08 | Erika Rojas |
| 146 | Entrega de Informe de Avances 10 | 1d | 2010-07-15 | 2010-07-15 | start no earlier than 2010-07-15 | Erika Rojas |
| 147 | Entrega de Informe de Avances 11 | 1d | 2010-07-22 | 2010-07-22 | start no earlier than 2010-07-22 | Erika Rojas |
| 148 | Entrega de Informe de Avances 12 | 1d | 2010-07-29 | 2010-07-29 | start no earlier than 2010-07-29 | Erika Rojas |
| 149 | Entrega de Informe de Avances 13 | 1d | 2010-08-05 | 2010-08-05 | start no earlier than 2010-08-05 | Erika Rojas |

Changed:

| ID | Task | Start | Finish | Duration | Complete | Total float | Other |
| --- | --- | --- | --- | --- | --- | --- | --- |
| 1 | **Sistema de Fidelización** |  | 2010-05-27 → 2010-08-05 (+70d) | 19d? → 81d? | 66% → 40% |  |  |
| 2 | **Requerimientos** |  | 2010-05-19 A → 2010-06-06 (+18d) | 9.75d → 26.75d? | 100% → 66% | none → 53.25d |  |
| 3 | **Caso de Uso: Mantener Cliente** |  | 2010-05-19 A → 2010-06-06 (+18d) | 9d → 26.75d? | 100% → 71% | none → 53.25d |  |
| 5 | Control de ECUS Mantener Cliente |  |  | 0.5d → 1d? |  |  | resources Gonzalo Azabache → Hebert Borjas |
| 6 | Aprobar especificación |  |  | 0d → 1d? |  |  |  |
| 10 | **Caso de Uso: Administrar Cuenta** |  | 2010-05-19 A → 2010-06-06 (+18d) | 2.75d → 19.75d? | 100% → 61% | none → 53.25d |  |
| 12 | Control de ECUS Administrar Cuenta |  |  | 0.5d → 1d? |  |  | resources Gonzalo Azabache → Hebert Borjas |
| 13 | Aprobar especificación |  |  | 0d → 0d? |  |  |  |
| 17 | **Caso de Uso: Mantener Producto** |  | 2010-05-19 A → 2010-06-06 (+18d) | 2.75d → 19.75d? | 100% → 61% | none → 53.25d |  |
| 19 | Control de ECUS Mantener Producto |  |  | 0.5d → 1d? |  |  |  |
| 20 | Aprobar especificación |  |  | 0d → 0d? |  |  | resources Gonzalo Azabache → Erika Rojas |
| 24 | **Caso de Uso: Registrar Canje** |  | 2010-05-13 A → 2010-06-06 (+24d) | 3.25d → 26.75d? | 100% → 67% | none → 53.25d |  |
| 26 | Control de ECUS Registrar Canje |  | 2010-05-13 A → 2010-05-12 A (-1d) | 0.5d → 0d |  |  |  |
| 27 | Aprobar especificación |  |  | 0d → 0.75d? |  |  |  |
| 31 | **Caso de Uso: Asignar Puntos x Producto** |  | 2010-05-13 A → 2010-06-06 (+24d) | 1.5d → 24.75d? | 100% → 50% | none → 53.25d |  |
| 33 | Control de ECUS Asignar Puntos x Producto |  | 2010-05-13 A → 2010-05-12 A (-1d) | 0.5d → 0d |  |  |  |
| 34 | Aprobar especificación |  |  | 0d → 0.75d? |  |  |  |
| 38 | **Caso de Uso: Consultar Puntos x Producto** |  | 2010-05-19 A → 2010-06-06 (+18d) | 2d → 19.75d? | 100% → 63% | none → 53.25d |  |
| 40 | Control de ECUS Consultar Puntos x Producto |  |  | 0.5d → 1d? |  |  |  |
| 41 | Aprobar especificación |  |  | 0d → 1d? |  |  |  |
| 45 | **Caso de Uso: Generar Orden de Pedido** |  | 2010-05-13 A → 2010-06-06 (+24d) | 3.5d → 26.75d? | 100% → 70% | none → 53.25d |  |
| 47 | Control de ECUS Generar Orden de Pedido |  | 2010-05-13 A → 2010-05-12 A (-1d) | 0.5d → 0d |  |  |  |
| 48 | Aprobar especificación |  |  | 0d → 1d? |  |  | resources Erika Rojas → Hebert Borjas |
| 52 | **Caso de Uso: Actualizar Stock de Productos** |  | 2010-05-19 A → 2010-06-06 (+18d) | 2.25d → 19.75d? | 100% → 59% | none → 53.25d |  |
| 54 | Control de ECUS Actualizar Stock de Productos |  | 2010-05-19 A → 2010-05-18 A (-1d) | 0.5d → 0d |  |  |  |
| 55 | Aprobar especificación |  |  | 0d → 0.75d? |  |  |  |
| 59 | **Caso de Uso: Generar Reporte de Clientes Fidelizados** |  | 2010-05-13 A → 2010-06-06 (+24d) | 3.5d → 26.75d? | 100% → 74% | none → 53.25d |  |
| 61 | Control de ECUS Generar Reporte de Clientes Fidelizados |  |  | 0.5d → 1d? |  |  |  |
| 62 | Aprobar especificación |  |  | 0d → 1d? |  |  |  |
| 66 | **Caso de Uso: Generar Reporte Reposición de Canje** |  | 2010-05-19 A → 2010-06-06 (+18d) | 2.25d → 19.75d? | 100% → 67% | none → 53.25d |  |
| 68 | Control de ECUS Generar Reporte Reposición de Canje |  |  | 0.5d → 1d? |  |  |  |
| 69 | Aprobar especificación |  |  | 0d → 0.75d? |  |  |  |
| 84 | **Arquitectura de Software** | 2010-05-18 A | 2010-05-22 → 2010-06-12 (+21d) | 4.75d? → 24.75d? | 0% → 19% | 5.25d → 47.25d |  |
| 85 | **Definir metas y restricciones** | 2010-05-20 A | 2010-05-20 A | 1d → 1d? | 0% → 100% | 7d → none |  |
| 86 | Listado de requerimientos no funcionales | 2010-05-20 A | 2010-05-20 A | 1d → 1d? | 0% → 100% | 7d → none |  |
| 87 | **Elaborar vistas de casos de uso** | 2010-05-18 A | 2010-05-22 A |  | 0% → 100% | 5.25d → none |  |
| 88 | Actualización del diagrama de actores | 2010-05-18 A | 2010-05-19 A |  | 0% → 100% | 8.25d → none |  |
| 89 | Actualización del diagrama de casos de uso | 2010-05-21 A | 2010-05-22 A |  | 0% → 100% | 5.25d → none |  |
| 90 | **Elaborar vistas de datos** | 2010-05-19 A | 2010-05-20 → 2010-06-12 (+23d) | 2d? → 23.75d? | 0% → 23% | 7d → 47.25d |  |
| 91 | Actualizar modelo conceptual | 2010-05-19 A | 2010-05-20 A |  | 0% → 100% | 7.25d → none |  |
| 92 | Generar modelo físico | 2010-05-20 A | 2010-05-20 A |  | 0% → 100% | 7d → none |  |
| 94 | **Mecanismos** | 2010-05-18 A | 2010-05-19 → 2010-06-07 (+19d) | 1.75d? → 20d? | 0% → 64% | 8.25d → 52d |  |
| 95 | Realizar inventario de mecanismos | 2010-05-18 A | 2010-05-19 A |  | 0% → 100% | 8.25d → none |  |
| 105 | **Administración del Proyecto** |  | 2010-05-22 A |  | 41% → 100% | 5d → none |  |
| 106 | **Planificación** |  | 2010-05-22 A |  | 67% → 100% | 5d → none |  |
| 107 | Elaborar cronograma de ejecución WBS con avances de tareas |  |  |  |  |  | resources none → Franco Castro |
| 108 | Actualizar COCOMO | 2010-05-22 A | 2010-05-22 A |  | 0% → 100% | 5d → none |  |
| 109 | **Gestión de Calidad** |  | 2010-05-22 A |  | 28% → 100% | 5.25d → none |  |
| 110 | Lista de comprobación | 2010-05-18 A | 2010-05-18 A |  | 0% → 100% | 9d → none |  |
| 112 | Documento estándar de interfaz | 2010-05-19 A | 2010-05-20 A |  | 0% → 100% | 7.25d → none |  |
| 113 | Documento estándar de nomenclatura | 2010-05-21 A | 2010-05-22 A |  | 0% → 100% | 5.25d → none |  |
| 114 | **Pruebas de Concepto de la Arquitectura** | 2010-05-22 A | 2010-05-23 A |  | 0% → 100% | 4.25d → none |  |
| 115 | Programación de un CUS transaccional | 2010-05-22 A | 2010-05-23 A |  | 0% → 100% | 4.25d → none | resources none → Gonzalo Azabache |
| 116 | Validación del desarrollo del CUS transaccional | 2010-05-23 A | 2010-05-23 A |  | 0% → 100% | 4.25d → none | resources none → Edmundo Esteban |
| 117 | Programación de un CUS reporte | 2010-05-22 A | 2010-05-23 A |  | 0% → 100% | 4.25d → none |  |
| 118 | Validación del desarrollo del CUS reporte | 2010-05-23 A | 2010-05-23 A |  | 0% → 100% | 4.25d → none |  |
| 121 | **Gestión del Proyecto** |  | 2010-05-27 A → 2010-08-05 (+70d) | 19d → 81d | 100% → 27% | none → 0d |  |
| 122 | **Reunión de seguimiento y desglose de trabajo** |  | 2010-05-23 A → 2010-08-01 (+70d) | 15d → 77d | 100% → 31% | none → 4d |  |
| 136 | **Entrega de Informe de Avances** |  | 2010-05-27 A → 2010-08-05 (+70d) | 15d → 77d | 100% → 23% | none → 0d |  |
